# 防火墙替换项目整体周期

Schedule from a web Gantt chart, 2025-08-11 to 2025-08-11.
Saturdays and Sundays are off

## Schedule

| ID | WBS | Task | Type | Duration | Start | Finish |
| --- | --- | --- | --- | --- | --- | --- |
| 2 | 1 | **调研阶段** |  | 1d | 2025-08-11 | 2025-08-11 |
| 3 | 1.1 | 调研工作启动会 |  | 1d | 2025-08-11 | 2025-08-11 |
| 4 | 2 | IDC网络环境调研 |  | 1d | 2025-08-11 | 2025-08-11 |
| 5 | 3 | 工厂网络环境调研 |  | 1d | 2025-08-11 | 2025-08-11 |
| 6 | 4 | 调研资料整理 |  | 1d | 2025-08-11 | 2025-08-11 |
| 7 | 5 | 调研工作确认会 |  | 1d | 2025-08-11 | 2025-08-11 |
| 8 | 6 | 方案设计阶段 | fixed start | 1d | 2025-08-11 | 2025-08-11 |
